# C2300_프로젝트일정(WBS)_20160610_v.0.1

Schedule from MS Project, 2016-09-26 to 2017-06-30, status date 2017-02-20, A marks actual dates.
ASETEC

## Calendars

- 표준: Mon-Fri 08:00-12:00, 13:00-17:00; Sat-Sun off. Exceptions (off unless hours are given): 2016-10-03 (개천절), 2017-01-27 to 2017-01-30 (설날), 2017-03-01 08:00-12:00, 13:00-17:00 (삼일절), 2017-05-03 (석가탕신일), 2017-05-05 (어린이날), 2017-06-06 (현충일).

## Schedule

| ID | WBS | Task | Duration | Start | Finish | Complete | Remaining | Baseline start | Baseline finish | Baseline duration | Total slack | Constraint | Deadline | 산출물 |
| --- | --- | --- | --- | --- | --- | --- | --- | --- | --- | --- | --- | --- | --- | --- |
| 1 | 1 | **창고관리시스템(WMS) 구축** | 194d | 2016-09-26 A | 2017-06-30 | 33% | 130.41d | 2016-09-26 | 2017-06-30 | 196d | 0d |  | 2017-06-30 |  |
| 2 | 1.1 | **1. 준비단계** | 9d | 2016-09-26 A | 2016-10-07 A | 100% |  | 2016-09-26 | 2016-10-07 | 9d |  |  |  |  |
| 3 | 1.1.1 | **1.1 프로젝트 착수** | 5d | 2016-09-26 A | 2016-09-30 A | 100% |  | 2016-09-26 | 2016-09-30 | 5d |  |  |  |  |
| 4 | 1.1.1.1 | 1.1.1 프로젝트 조직 구성 | 1d | 2016-09-26 A | 2016-09-26 A | 100% |  | 2016-09-26 | 2016-09-26 | 1d |  | finish no earlier than 2016-09-26 |  |  |
| 5 | 1.1.1.2 | 1.1.2 개발 산출물 목록 작성 | 2d | 2016-09-27 A | 2016-09-28 A | 100% |  | 2016-09-27 | 2016-09-28 | 2d |  | finish no earlier than 2016-09-28 |  |  |
| 6 | 1.1.1.3 | 1.1.3 산출물 표준 Template 작성 | 5d | 2016-09-26 A | 2016-09-30 A | 100% |  | 2016-09-26 | 2016-09-30 | 5d |  | finish no earlier than 2016-09-30 |  |  |
| 7 | 1.1.2 | **1.2 프로젝트 계획수립** | 4d | 2016-10-04 A | 2016-10-07 A | 100% |  | 2016-10-04 | 2016-10-07 | 4d |  |  |  |  |
| 8 | 1.1.2.1 | 1.2.1 WBS & Schedule 작성(상세화) | 1d | 2016-10-04 A | 2016-10-04 A | 100% |  | 2016-10-04 | 2016-10-04 | 1d |  | finish no earlier than 2016-10-04 |  |  |
| 9 | 1.1.2.2 | 1.2.2 프로젝트 계획서 작성 | 2d | 2016-10-05 A | 2016-10-06 A | 100% |  | 2016-10-05 | 2016-10-06 | 2d |  | finish no earlier than 2016-10-06 |  | 수행계획서 |
| 10 | 1.1.2.3 | 1.2.3 kick off 미팅 | 1d | 2016-10-07 A | 2016-10-07 A | 100% |  | 2016-10-10 | 2016-10-10 | 1d |  | finish no earlier than 2016-10-07 |  |  |
| 11 | 1.2 | **2. 분석단계** | 10d | 2016-10-10 A | 2016-10-21 A | 100% |  | 2016-10-10 | 2016-10-21 | 10d |  |  |  |  |
| 12 | 1.2.1 | **2.1 AS-IS 분석** | 5d | 2016-10-10 A | 2016-10-14 A | 100% |  | 2016-10-10 | 2016-10-14 | 5d |  |  |  |  |
| 13 | 1.2.1.1 | 2.1.1 업무 파악 | 3d | 2016-10-10 A | 2016-10-12 A | 100% |  | 2016-10-11 | 2016-10-13 | 3d |  | finish no earlier than 2016-10-12 |  |  |
| 14 | 1.2.1.2 | 2.1.2 업무 분석(사례분석) | 2d | 2016-10-13 A | 2016-10-14 A | 100% |  | 2016-10-14 | 2016-10-17 | 2d |  | start no earlier than 2016-10-13 |  | 업무기능기술서 |
| 15 | 1.2.2 | **2.2 요건 정의** | 4d | 2016-10-17 A | 2016-10-20 A | 100% |  | 2016-10-17 | 2016-10-20 | 4d |  |  |  |  |
| 16 | 1.2.2.1 | 2.2.1 솔루션 Needs 분석 | 1d | 2016-10-17 A | 2016-10-17 A | 100% |  | 2016-10-17 | 2016-10-17 | 1d |  | start no earlier than 2016-10-17 |  |  |
| 17 | 1.2.2.2 | 2.2.2 요구사항 정의서 작성 | 2d | 2016-10-18 A | 2016-10-19 A | 100% |  | 2016-10-18 | 2016-10-19 | 2d |  | start no earlier than 2016-10-18 |  | 요구분석서 |
| 18 | 1.2.2.3 | 2.2.3 요구사항 정의 Review | 1d | 2016-10-20 A | 2016-10-20 A | 100% |  | 2016-10-20 | 2016-10-20 | 1d |  | finish no earlier than 2016-10-20 |  |  |
| 19 | 1.2.3 | 2.3 검토 | 1d | 2016-10-21 A | 2016-10-21 A | 100% |  | 2016-10-21 | 2016-10-21 | 1d |  | start no earlier than 2016-10-21 |  |  |
| 20 | 1.3 | **3. 설계단계** | 50d | 2016-10-24 A | 2016-12-30 A | 100% |  | 2016-10-24 | 2016-12-02 | 30d |  |  |  |  |
| 21 | 1.3.1 | **3.1 To-Be 모델링** | 3d | 2016-10-24 A | 2016-10-26 A | 100% |  | 2016-10-24 | 2016-10-26 | 3d |  |  |  |  |
| 22 | 1.3.1.1 | 3.1.1 전체 프로세스 정의 | 1d | 2016-10-24 A | 2016-10-24 A | 100% |  | 2016-10-24 | 2016-10-24 | 1d |  | finish no earlier than 2016-10-24 |  |  |
| 23 | 1.3.1.2 | 3.1.2 단위 프로세스 정의 | 2d | 2016-10-25 A | 2016-10-26 A | 100% |  | 2016-10-25 | 2016-10-26 | 2d |  | finish no earlier than 2016-10-26 |  | ToBe프로세스 |
| 24 | 1.3.2 | **3.2 화면설계** | 47d | 2016-10-27 A | 2016-12-30 A | 100% |  | 2016-10-27 | 2016-11-25 | 25d |  |  |  |  |
| 25 | 1.3.2.1 | 3.2.1 프로그램 목록 정의 | 1d | 2016-10-27 A | 2016-10-27 A | 100% |  | 2016-10-27 | 2016-10-27 | 1d |  | start no earlier than 2016-10-27 |  | 프로그램목록 |
| 26 | 1.3.2.2 | 3.2.2 화면 UI 설계 | 5d | 2016-10-28 A | 2016-11-03 A | 100% |  | 2016-10-28 | 2016-11-03 | 5d |  | start no earlier than 2016-10-28 |  | 화면UI설계서 |
| 27 | 1.3.2.3 | 3.2.3 프로그램 설계 | 14d | 2016-11-04 A | 2016-11-23 A | 100% |  | 2016-11-04 | 2016-11-23 | 14d |  | start no earlier than 2016-11-04 |  | 프로그램정의서 |
| 28 | 1.3.2.4 | 3.2.4 Stored Procedure 목록 정의 | 27d | 2016-11-24 A | 2016-12-30 A | 100% |  | 2016-11-24 | 2016-11-25 | 2d |  | finish no earlier than 2016-11-25 |  | 프로시져목록 |

| ID | WBS | Task | Duration | Start | Finish | Complete | Remaining | Baseline start | Baseline finish | Baseline duration | Total slack | Constraint | 산출물 |
| --- | --- | --- | --- | --- | --- | --- | --- | --- | --- | --- | --- | --- | --- |
| 29 | 1.3.3 | **3.3 테이블설계** | 5d | 2016-11-28 A | 2016-12-02 A | 100% |  | 2016-11-28 | 2016-12-02 | 5d |  |  |  |
| 30 | 1.3.3.1 | 3.3.1 테이블 목록 정의 | 1d | 2016-11-28 A | 2016-11-28 A | 100% |  | 2016-11-28 | 2016-11-28 | 1d |  | start no earlier than 2016-11-28 | 테이블목록 |
| 31 | 1.3.3.2 | 3.3.2 테이블 설계 | 4d | 2016-11-29 A | 2016-12-02 A | 100% |  | 2016-11-29 | 2016-12-02 | 4d |  | start no earlier than 2016-11-29 | 테이블정의서(ERD) |
| 32 | 1.3.4 | 3.4 PDA 설계 | 10d | 2016-12-05 A | 2016-12-16 A | 100% |  | 2016-12-05 | 2016-12-16 | 10d |  | start no earlier than 2016-12-05 |  |
| 33 | 1.3.5 | 3.5 인터페이스 설계 | 10d | 2016-11-14 A | 2016-11-25 A | 100% |  | 2016-11-14 | 2016-11-25 | 10d |  | start no earlier than 2016-11-14 | 인터페이스정의서 |
| 34 | 1.3.6 | 3.6 설계 검토 및 확정 | 1d | 2016-12-01 A | 2016-12-01 A | 100% |  | 2016-12-01 | 2016-12-01 | 1d |  | finish no earlier than 2016-12-01 |  |
| 35 | 1.3.7 | 3.7 중간 설계보고 | 1d | 2016-12-05 A | 2016-12-05 A | 100% |  | 2016-12-02 | 2016-12-02 | 1d |  | finish no earlier than 2016-12-02 |  |
| 36 | 1.4 | **4. 구현단계** | 128d | 2016-12-05 A | 2017-06-07 | 20% | 102.07d | 2016-12-05 | 2017-06-07 | 128d | 17d |  |  |
| 37 | 1.4.1 | 4.1 개발 일정 계획 | 1d | 2017-02-16 A | 2017-02-16 A | 100% |  | 2017-02-16 | 2017-02-16 | 1d |  | start no earlier than 2017-02-16 |  |
| 38 | 1.4.2 | **4.2 프로그램 개발** | 120d | 2016-12-05 A | 2017-05-25 | 20% | 95.41d | 2016-12-05 | 2017-05-25 | 120d | 25d |  |  |
| 39 | 1.4.2.1 | 4.2.1 마스터관리 | 11d | 2017-02-17 A | 2017-03-03 | 5% | 10.45d | 2017-02-17 | 2017-03-03 | 11d | 82d | finish no earlier than 2017-03-03 |  |
| 40 | 1.4.2.2 | 4.2.2 입고관리 | 18d | 2017-03-06 | 2017-03-29 |  |  | 2017-03-06 | 2017-03-29 | 18d | 64d | finish no earlier than 2017-03-29 |  |
| 41 | 1.4.2.3 | 4.2.3 출고관리 | 25d | 2017-03-06 | 2017-04-07 |  |  | 2017-03-06 | 2017-04-07 | 25d | 57d | finish no earlier than 2017-04-07 |  |
| 42 | 1.4.2.4 | 4.2.4 반입관리 | 7d | 2017-03-30 | 2017-04-07 |  |  | 2017-03-30 | 2017-04-07 | 7d | 57d | finish no earlier than 2017-04-07 |  |
| 43 | 1.4.2.5 | 4.2.5 반출관리 | 7d | 2017-04-10 | 2017-04-18 |  |  | 2017-04-10 | 2017-04-18 | 7d | 50d | finish no earlier than 2017-04-18 |  |
| 44 | 1.4.2.6 | 4.2.6 재고관리 | 31d | 2017-04-11 | 2017-05-25 |  |  | 2017-04-11 | 2017-05-25 | 31d | 25d | start no earlier than 2017-04-11 |  |
| 45 | 1.4.2.7 | 4.2.7 인터페이스 | 14d | 2017-04-19 | 2017-05-10 |  |  | 2017-04-19 | 2017-05-10 | 14d | 36d | start no earlier than 2017-04-19 |  |
| 46 | 1.4.2.8 | 4.2.8 PDA | 43d | 2017-03-01 | 2017-04-28 |  |  | 2017-03-01 | 2017-04-28 | 43d | 42d | finish no earlier than 2017-04-28 |  |
| 47 | 1.4.2.9 | 4.2.9 프로시저 | 103d | 2016-12-05 A | 2017-04-28 | 51% | 50.47d | 2016-12-05 | 2017-04-28 | 103d | 42d | start no earlier than 2016-12-05 |  |
| 48 | 1.4.3 | **4.3 매뉴얼 작성** | 7d | 2017-05-29 | 2017-06-07 |  |  | 2017-05-29 | 2017-06-07 | 7d | 17d |  |  |
| 49 | 1.4.3.1 | 4.3.1 사용자 매뉴얼 작성 | 5d | 2017-05-29 | 2017-06-02 |  |  | 2017-05-29 | 2017-06-02 | 5d | 19d | start no earlier than 2017-05-29 | 사용자매뉴얼 |
| 50 | 1.4.3.2 | 4.3.2 운영자 매뉴얼 작성 | 2d | 2017-06-05 | 2017-06-07 |  |  | 2017-06-05 | 2017-06-07 | 2d | 17d | start no earlier than 2017-06-05 | 운영자매뉴얼 |
| 51 | 1.5 | **5. 테스트단계** | 87d | 2017-02-27 | 2017-06-30 |  |  | 2017-02-27 | 2017-06-30 | 87d | 0d |  |  |
| 52 | 1.5.1 | 5.1 단위 테스트 | 63d | 2017-02-27 | 2017-05-26 |  |  | 2017-02-27 | 2017-05-26 | 63d | 24d | start no earlier than 2017-02-27 | 단위테스트결과서 |

| ID | WBS | Task | Duration | Start | Finish | Baseline start | Baseline finish | Baseline duration | Total slack | Constraint | 산출물 |
| --- | --- | --- | --- | --- | --- | --- | --- | --- | --- | --- | --- |
| 53 | 1.5.2 | **5.2 통합 테스트** | 13d | 2017-05-15 | 2017-05-31 | 2017-05-15 | 2017-05-31 | 13d | 21d |  |  |
| 54 | 1.5.2.1 | 5.2.1 통합테스트 시나리오 작성 | 10d | 2017-05-15 | 2017-05-26 | 2017-05-15 | 2017-05-26 | 10d | 24d | start no earlier than 2017-05-15 | 통합테스트시나리오 |
| 55 | 1.5.2.2 | 5.2.2 통합테스트 실시 | 3d | 2017-05-29 | 2017-05-31 | 2017-05-29 | 2017-05-31 | 3d | 21d | finish no earlier than 2017-05-31 |  |
| 56 | 1.5.2.3 | 5.2.3 통합테스트 결과서 작성 | 3d | 2017-05-29 | 2017-05-31 | 2017-05-29 | 2017-05-31 | 3d | 21d | finish no earlier than 2017-05-31 | 통합테스트결과서 |
| 57 | 1.5.3 | 5.3 테스트 결과 검토 및 확정 | 22d | 2017-05-31 | 2017-06-30 | 2017-05-31 | 2017-06-30 | 22d | 0d | finish no earlier than 2017-06-30 |  |
