# C2300_프로젝트일정(WBS)_20160610_v.0.1

Schedule from MS Project, 2016-06-10 to 2016-12-16, status date 2016-06-10, A marks actual dates.
ASETEC

## Calendars

- 표준: Mon-Fri 08:00-12:00, 13:00-17:00; Sat-Sun off. Exceptions (off unless hours are given): 2016-08-15 (광복절), 2016-09-14 to 2016-09-16 (추석), 2016-10-03 (개천절).

## Schedule

| ID | WBS | Task | Duration | Start | Finish | Complete | Remaining | Baseline start | Baseline finish | Baseline duration | Total slack | Constraint | Deadline | 산출물 |
| --- | --- | --- | --- | --- | --- | --- | --- | --- | --- | --- | --- | --- | --- | --- |
| 1 | 1 | **창고관리시스템(WMS) 구축** | 131d | 2016-06-10 A | 2016-12-16 | 1% | 129.52d | 2016-06-27 | 2016-12-16 | 120d | 10d |  | 2016-12-31 |  |
| 2 | 1.1 | **1. 준비단계** | 16d | 2016-06-10 A | 2016-07-01 | 37% | 10.13d | 2016-06-27 | 2016-07-01 | 5d | 125d |  |  |  |
| 3 | 1.1.1 | **1.1 프로젝트 착수** | 12d | 2016-06-16 A | 2016-07-01 | 29% | 8.57d | 2016-06-27 | 2016-07-01 | 5d | 125d |  |  |  |
| 4 | 1.1.1.1 | 1.1.1 프로젝트 조직 구성 | 5d | 2016-06-27 | 2016-07-01 |  |  | 2016-06-27 | 2016-07-01 | 5d | 125d | start no earlier than 2016-06-27 |  |  |
| 5 | 1.1.1.2 | 1.1.2 개발 산출물 목록 작성 | 1d | 2016-06-16 A | 2016-06-16 A | 100% |  | 2016-06-27 | 2016-06-27 | 1d |  | start no earlier than 2016-06-27 |  |  |
| 6 | 1.1.1.3 | 1.1.3 산출물 표준 Template 작성 | 1d | 2016-06-16 A | 2016-06-16 A | 100% |  | 2016-06-27 | 2016-06-27 | 1d |  | start no earlier than 2016-06-27 |  |  |
| 7 | 1.1.2 | **1.2 프로젝트 계획수립** | 15d | 2016-06-10 A | 2016-06-30 | 48% | 7.8d | 2016-06-29 | 2016-06-30 | 2d | 126d |  |  |  |
| 8 | 1.1.2.1 | 1.2.1 WBS & Schedule 작성(상세화) | 2d | 2016-06-10 A | 2016-06-13 | 50% | 1d | 2016-06-29 | 2016-06-30 | 2d | 139d | start no earlier than 2016-06-29 |  |  |
| 9 | 1.1.2.2 | 1.2.2 프로젝트 계획서 작성 | 2d | 2016-06-10 A | 2016-06-13 | 70% | 0.6d | 2016-06-29 | 2016-06-30 | 2d | 139d | start no earlier than 2016-06-29 |  | 수행계획서 |
| 10 | 1.1.2.3 | 1.2.3 kick off 미팅 | 1d | 2016-06-30 | 2016-06-30 |  |  | 2016-06-30 | 2016-06-30 | 1d | 126d | start no earlier than 2016-06-30 |  |  |
| 11 | 1.2 | **2. 분석단계** | 11d | 2016-07-01 | 2016-07-15 |  |  | 2016-07-01 | 2016-07-15 | 11d | 115d |  |  |  |
| 12 | 1.2.1 | **2.1 AS-IS 분석** | 6d | 2016-07-01 | 2016-07-08 |  |  | 2016-07-01 | 2016-07-08 | 6d | 120d |  |  |  |
| 13 | 1.2.1.1 | 2.1.1 업무 파악 | 3d | 2016-07-01 | 2016-07-05 |  |  | 2016-07-01 | 2016-07-05 | 3d | 123d | start no earlier than 2016-07-01 |  |  |
| 14 | 1.2.1.2 | 2.1.2 업무 분석(사례분석) | 3d | 2016-07-06 | 2016-07-08 |  |  | 2016-07-06 | 2016-07-08 | 3d | 120d | start no earlier than 2016-07-06 |  | 업무기능기술서 |
| 15 | 1.2.2 | **2.2 요건 정의** | 5d | 2016-07-11 | 2016-07-15 |  |  | 2016-07-11 | 2016-07-15 | 5d | 115d |  |  |  |
| 16 | 1.2.2.1 | 2.2.1 솔루션 Needs 분석 | 1d | 2016-07-11 | 2016-07-11 |  |  | 2016-07-11 | 2016-07-11 | 1d | 119d | start no earlier than 2016-07-11 |  |  |
| 17 | 1.2.2.2 | 2.2.2 요구사항 정의서 작성 | 3d | 2016-07-12 | 2016-07-14 |  |  | 2016-07-12 | 2016-07-14 | 3d | 116d | start no earlier than 2016-07-12 |  | 요구분석서 |
| 18 | 1.2.2.3 | 2.2.3 요구사항 정의 Review | 1d | 2016-07-15 | 2016-07-15 |  |  | 2016-07-15 | 2016-07-15 | 1d | 115d | start no earlier than 2016-07-15 |  |  |
| 19 | 1.2.3 | 2.3 검토 | 1d | 2016-07-15 | 2016-07-15 |  |  | 2016-07-15 | 2016-07-15 | 1d | 115d | start no earlier than 2016-07-15 |  |  |
| 20 | 1.3 | **3. 설계단계** | 47d | 2016-07-11 | 2016-09-19 |  |  | 2016-07-11 | 2016-09-19 | 47d | 73d |  |  |  |
| 21 | 1.3.1 | **3.1 To-Be 모델링** | 3d | 2016-07-18 | 2016-07-20 |  |  | 2016-07-18 | 2016-07-20 | 3d | 112d |  |  |  |
| 22 | 1.3.1.1 | 3.1.1 전체 프로세스 정의 | 1d | 2016-07-18 | 2016-07-18 |  |  | 2016-07-18 | 2016-07-18 | 1d | 114d | start no earlier than 2016-07-18 |  |  |
| 23 | 1.3.1.2 | 3.1.2 단위 프로세스 정의 | 2d | 2016-07-19 | 2016-07-20 |  |  | 2016-07-19 | 2016-07-20 | 2d | 112d | start no earlier than 2016-07-19 |  | ToBe프로세스 |
| 24 | 1.3.2 | **3.2 화면설계** | 25d | 2016-07-21 | 2016-08-25 |  |  | 2016-07-21 | 2016-08-25 | 25d | 87d |  |  |  |
| 25 | 1.3.2.1 | 3.2.1 프로그램 목록 정의 | 2d | 2016-07-21 | 2016-07-22 |  |  | 2016-07-21 | 2016-07-22 | 2d | 110d | start no earlier than 2016-07-21 |  | 프로그램목록 |
| 26 | 1.3.2.2 | 3.2.2 화면 UI 설계 | 5d | 2016-07-25 | 2016-07-29 |  |  | 2016-07-25 | 2016-07-29 | 5d | 105d | start no earlier than 2016-07-25 |  | 화면UI설계서 |
| 27 | 1.3.2.3 | 3.2.3 프로그램 설계 | 14d | 2016-08-01 | 2016-08-19 |  |  | 2016-08-01 | 2016-08-19 | 14d | 91d | start no earlier than 2016-08-01 |  | 프로그램정의서 |
| 28 | 1.3.2.4 | 3.2.4 Stored Procedure 목록 정의 | 4d | 2016-08-22 | 2016-08-25 |  |  | 2016-08-22 | 2016-08-25 | 4d | 87d | start no earlier than 2016-08-22 |  | 프로시져목록 |

| ID | WBS | Task | Duration | Start | Finish | Baseline start | Baseline finish | Baseline duration | Total slack | Constraint | 산출물 |
| --- | --- | --- | --- | --- | --- | --- | --- | --- | --- | --- | --- |
| 29 | 1.3.3 | **3.3 테이블설계** | 5d | 2016-08-01 | 2016-08-05 | 2016-08-01 | 2016-08-05 | 5d | 100d |  |  |
| 30 | 1.3.3.1 | 3.3.1 테이블 목록 정의 | 1d | 2016-08-01 | 2016-08-01 | 2016-08-01 | 2016-08-01 | 1d | 104d | start no earlier than 2016-08-01 | 테이블목록 |
| 31 | 1.3.3.2 | 3.3.2 테이블 설계 | 4d | 2016-08-02 | 2016-08-05 | 2016-08-02 | 2016-08-05 | 4d | 100d | start no earlier than 2016-08-02 | 테이블정의서(ERD) |
| 32 | 1.3.4 | **3.4 Framework 설계** | 37d | 2016-07-11 | 2016-08-31 | 2016-07-11 | 2016-08-31 | 37d | 83d |  |  |
| 33 | 1.3.4.1 | 3.4.1 Framework 구성 | 3d | 2016-07-11 | 2016-07-13 | 2016-07-11 | 2016-07-13 | 3d | 117d | start no earlier than 2016-07-11 |  |
| 34 | 1.3.4.2 | 3.4.2 공통 Function 설계 | 5d | 2016-07-14 | 2016-07-20 | 2016-07-14 | 2016-07-20 | 5d | 112d | start no earlier than 2016-07-14 |  |
| 35 | 1.3.4.3 | 3.4.3 Framework 개발 | 29d | 2016-07-21 | 2016-08-31 | 2016-07-21 | 2016-08-31 | 29d | 83d | finish no earlier than 2016-08-31 | 표준개발가이드 |
| 36 | 1.3.4.4 | 3.4.3 디자인 시안 | 4d | 2016-08-16 | 2016-08-19 | 2016-08-16 | 2016-08-19 | 4d | 91d | start no earlier than 2016-08-15 |  |
| 37 | 1.3.5 | 3.5 PDA 설계 | 10d | 2016-09-01 | 2016-09-19 | 2016-09-01 | 2016-09-19 | 10d | 73d | start no earlier than 2016-09-01 |  |
| 38 | 1.3.6 | 3.6 인터페이스 설계 | 10d | 2016-09-01 | 2016-09-19 | 2016-09-01 | 2016-09-19 | 10d | 73d | start no earlier than 2016-09-01 | 인터페이스정의서 |
| 39 | 1.3.7 | 3.7 설계 검토 및 확정 | 2d | 2016-08-29 | 2016-08-30 | 2016-08-29 | 2016-08-30 | 2d | 84d | start no earlier than 2016-08-29 |  |
| 40 | 1.3.8 | 3.8 중간 설계보고 | 1d | 2016-08-31 | 2016-08-31 | 2016-08-31 | 2016-08-31 | 1d | 83d | start no earlier than 2016-08-31 |  |
| 41 | 1.4 | **4. 구현단계** | 61d | 2016-09-01 | 2016-11-30 | 2016-09-01 | 2016-11-30 | 61d | 22d |  |  |
| 42 | 1.4.1 | 4.1 개발 일정 계획 | 2d | 2016-09-01 | 2016-09-02 | 2016-09-01 | 2016-09-02 | 2d | 81d | start no earlier than 2016-09-01 |  |
| 43 | 1.4.2 | **4.2 프로그램 개발** | 48d | 2016-09-01 | 2016-11-11 | 2016-09-01 | 2016-11-11 | 48d | 35d |  |  |
| 44 | 1.4.2.1 | 4.2.1 마스터관리 | 14d | 2016-09-01 | 2016-09-23 | 2016-09-01 | 2016-09-23 | 14d | 69d | start no earlier than 2016-09-01 |  |
| 45 | 1.4.2.2 | 4.2.2 입고관리 | 19d | 2016-09-19 | 2016-10-14 | 2016-09-19 | 2016-10-14 | 19d | 55d | start no earlier than 2016-09-19 |  |
| 46 | 1.4.2.3 | 4.2.3 출고관리 | 34d | 2016-09-26 | 2016-11-11 | 2016-09-26 | 2016-11-11 | 34d | 35d | start no earlier than 2016-09-26 |  |
| 47 | 1.4.2.4 | 4.2.4 재고관리 | 20d | 2016-10-17 | 2016-11-11 | 2016-10-17 | 2016-11-11 | 20d | 35d | start no earlier than 2016-10-17 |  |
| 48 | 1.4.2.5 | 4.2.5 PDA | 39d | 2016-09-19 | 2016-11-11 | 2016-09-19 | 2016-11-11 | 39d | 35d | start no earlier than 2016-09-19 |  |
| 49 | 1.4.2.6 | 4.2.6 인터페이스 | 39d | 2016-09-19 | 2016-11-11 | 2016-09-19 | 2016-11-11 | 39d | 35d | start no earlier than 2016-09-19 |  |
| 50 | 1.4.3 | **4.3 매뉴얼 작성** | 8d | 2016-11-21 | 2016-11-30 | 2016-11-21 | 2016-11-30 | 8d | 22d |  |  |
| 51 | 1.4.3.1 | 4.3.1 사용자 매뉴얼 작성 | 5d | 2016-11-21 | 2016-11-25 | 2016-11-21 | 2016-11-25 | 5d | 25d | start no earlier than 2016-11-21 | 사용자매뉴얼 |
| 52 | 1.4.3.2 | 4.3.2 운영자 매뉴얼 작성 | 3d | 2016-11-28 | 2016-11-30 | 2016-11-28 | 2016-11-30 | 3d | 22d | start no earlier than 2016-11-28 | 운영자매뉴얼 |

| ID | WBS | Task | Duration | Start | Finish | Baseline start | Baseline finish | Baseline duration | Total slack | Constraint | 산출물 |
| --- | --- | --- | --- | --- | --- | --- | --- | --- | --- | --- | --- |
| 53 | 1.5 | **5. 테스트단계** | 52d | 2016-09-19 | 2016-11-30 | 2016-09-19 | 2016-11-30 | 52d | 22d |  |  |
| 54 | 1.5.1 | 5.1 단위 테스트 | 39d | 2016-09-19 | 2016-11-11 | 2016-09-19 | 2016-11-11 | 39d | 35d | start no earlier than 2016-09-19 | 단위테스트결과서 |
| 55 | 1.5.2 | **5.2 통합 테스트** | 19d | 2016-11-01 | 2016-11-25 | 2016-11-01 | 2016-11-25 | 19d | 25d |  |  |
| 56 | 1.5.2.1 | 5.2.1 통합테스트 시나리오 작성 | 9d | 2016-11-01 | 2016-11-11 | 2016-11-01 | 2016-11-11 | 9d | 35d | finish no earlier than 2016-11-11 | 통합테스트시나리오 |
| 57 | 1.5.2.2 | 5.2.2 통합테스트 실시 | 10d | 2016-11-14 | 2016-11-25 | 2016-11-14 | 2016-11-25 | 10d | 25d | start no earlier than 2016-11-14 |  |
| 58 | 1.5.2.3 | 5.2.3 통합테스트 결과서 작성 | 10d | 2016-11-14 | 2016-11-25 | 2016-11-14 | 2016-11-25 | 10d | 25d | finish no earlier than 2016-11-25 | 통합테스트결과서 |
| 59 | 1.5.3 | 5.3 운영자 및 사용자 교육 | 3d | 2016-11-28 | 2016-11-30 | 2016-11-28 | 2016-11-30 | 3d | 22d | start no earlier than 2016-11-28 |  |
| 60 | 1.5.4 | 5.4 시스템 적용 계획 수립 | 3d | 2016-11-28 | 2016-11-30 | 2016-11-28 | 2016-11-30 | 3d | 22d | start no earlier than 2016-11-28 |  |
| 61 | 1.5.5 | 5.5 테스트 결과 검토 및 확정 | 3d | 2016-11-28 | 2016-11-30 | 2016-11-28 | 2016-11-30 | 3d | 22d | start no earlier than 2016-11-28 |  |
| 62 | 1.6 | **6. 운영단계** | 12d | 2016-12-01 | 2016-12-16 | 2016-12-01 | 2016-12-16 | 12d | 10d |  |  |
| 63 | 1.6.1 | 6.1 시스템 오픈 | 2d | 2016-12-01 | 2016-12-02 | 2016-12-01 | 2016-12-02 | 2d | 20d | start no earlier than 2016-12-01 |  |
| 64 | 1.6.2 | 6.2 시스템 안정화 | 12d | 2016-12-01 | 2016-12-16 | 2016-12-01 | 2016-12-16 | 12d | 10d | start no earlier than 2016-12-01 |  |
| 65 | 1.6.3 | 6.3 산출물 인도 | 1d | 2016-12-16 | 2016-12-16 | 2016-12-16 | 2016-12-16 | 1d | 10d | start no earlier than 2016-12-16 |  |
| 66 | 1.6.4 | 6.4 최종 완료보고 | 1d | 2016-12-16 | 2016-12-16 | 2016-12-16 | 2016-12-16 | 1d | 10d | start no earlier than 2016-12-16 |  |
